# WPS

Schedule from MS Project, 2018-09-22 to 2019-01-04, scheduled back from the finish, costs in ¥.

## Calendars

- 标准: Mon-Fri 08:00-12:00, 13:00-17:00; Sat-Sun off.

## Resources

| Resource | Rate |
| --- | --- |
| 项目经理 | 50 |
| UI专家 | 40 |
| 需求专家 | 35 |
| 设计专家 | 35 |
| 质量专家 | 35 |
| 测试员 | 30 |
| 程序员1 | 30 |
| 程序员2 | 30 |
| 程序员3 | 30 |
| 程序员4 | 30 |

## Schedule

| ID | WBS | Task | Type | Duration | Start | Finish | Predecessors | Constraint | Resources | Work | Cost |
| --- | --- | --- | --- | --- | --- | --- | --- | --- | --- | --- | --- |
| 1 | 1 | **启动** |  | 4d | 2018-09-22 | 2018-09-26 |  | as late as possible |  | 48h | 2,320 |
| 2 | 1.1 | 组建核心团队 | manual | 1d | 2018-09-22 | 2018-09-22 |  | as late as possible | 项目经理; UI专家 | 16h | 720 |
| 3 | 1.2 | 干系人分析 | manual | 1d | 2018-09-23 | 2018-09-23 |  | as late as possible | 项目经理 | 8h | 400 |
| 4 | 1.3 | 里程碑计划 | manual | 1d | 2018-09-24 | 2018-09-24 |  | as late as possible | 项目经理 | 8h | 400 |
| 5 | 1.4 | 制定项目章程 | manual | 1d | 2018-09-25 | 2018-09-25 | 2, 3, 4 | as late as possible | 项目经理 | 8h | 400 |
| 6 | 1.5 | 项目启动大会 | manual | 1d | 2018-09-26 | 2018-09-26 | 5 | as late as possible | 项目经理 | 8h | 400 |
| 7 | 2 | **规划** |  | 24d | 2018-10-05 | 2018-11-07 |  | as late as possible |  | 256h | 12,000 |
| 8 | 2.1 | **规划范围** |  | 4d | 2018-10-05 | 2018-10-10 |  | as late as possible |  | 48h | 2,080 |
| 9 | 2.1.1 | 制定需求说明书 | manual | 1d | 2018-10-05 | 2018-10-05 | 6 | as late as possible | 需求专家 | 8h | 280 |
| 10 | 2.1.2 | 界面设计 | manual | 1d | 2018-10-06 | 2018-10-06 | 9 | as late as possible | UI专家 | 8h | 320 |
| 11 | 2.1.3 | 详细设计说明书 | manual | 1d | 2018-10-07 | 2018-10-07 | 9 | as late as possible | 设计专家 | 8h | 280 |
| 12 | 2.1.4 | 范围说明书 | manual | 1d | 2018-10-08 | 2018-10-08 | 9 | as late as possible | 项目经理 | 8h | 400 |
| 13 | 2.1.5 | 创建WBS | manual | 1d | 2018-10-09 | 2018-10-09 | 10, 11, 12 | as late as possible | 项目经理 | 8h | 400 |
| 14 | 2.1.6 | 形成范围基准 | manual | 1d | 2018-10-10 | 2018-10-10 | 13 | as late as possible | 项目经理 | 8h | 400 |
| 15 | 2.2 | **规划时间** |  | 3d | 2018-10-11 | 2018-10-15 |  | as late as possible |  | 40h | 2,000 |
| 16 | 2.2.1 | 排列工作包顺序 | manual | 1d | 2018-10-11 | 2018-10-11 | 14 | as late as possible | 项目经理 | 8h | 400 |
| 17 | 2.2.2 | 估算资源 | manual | 1d | 2018-10-12 | 2018-10-12 | 16 | as late as possible | 项目经理 | 8h | 400 |
| 18 | 2.2.3 | 估算持续时间 | manual | 1d | 2018-10-13 | 2018-10-13 | 17 | as late as possible | 项目经理 | 8h | 400 |
| 19 | 2.2.4 | 制定进度计划 | manual | 1d | 2018-10-14 | 2018-10-14 | 18 | as late as possible | 项目经理 | 8h | 400 |
| 20 | 2.2.5 | 形成进度基准 | manual | 1d | 2018-10-15 | 2018-10-15 | 19 | as late as possible | 项目经理 | 8h | 400 |
| 21 | 2.3 | **规划成本** |  | 3d | 2018-10-16 | 2018-10-18 |  | as late as possible |  | 24h | 1,200 |
| 22 | 2.3.1 | 项目成本估算 | manual | 1d | 2018-10-16 | 2018-10-16 | 20 | as late as possible | 项目经理 | 8h | 400 |
| 23 | 2.3.2 | 项目预算 | manual | 1d | 2018-10-17 | 2018-10-17 | 22 | as late as possible | 项目经理 | 8h | 400 |
| 24 | 2.3.3 | 形成范围基准 | manual | 1d | 2018-10-18 | 2018-10-18 | 23 | as late as possible | 项目经理 | 8h | 400 |

| ID | WBS | Task | Type | Duration | Start | Finish | Predecessors | Constraint | Resources | Work | Cost |
| --- | --- | --- | --- | --- | --- | --- | --- | --- | --- | --- | --- |
| 25 | 2.4 | **规划质量** |  | 2d | 2018-10-19 | 2018-10-20 |  | as late as possible |  | 16h | 560 |
| 26 | 2.4.1 | 制定测试计划 | manual | 1d | 2018-10-19 | 2018-10-19 | 14 | as late as possible | 质量专家 | 8h | 280 |
| 27 | 2.4.2 | 制定测试用例 | manual | 1d | 2018-10-20 | 2018-10-20 | 26 | as late as possible | 质量专家 | 8h | 280 |
| 28 | 2.5 | **规划人力资源** |  | 3d | 2018-10-21 | 2018-10-23 |  | as late as possible |  | 32h | 1,360 |
| 29 | 2.5.1 | 制定人力资源计划 | manual | 2d | 2018-10-21 | 2018-10-22 | 17 | as late as possible | 项目经理 | 16h | 800 |
| 30 | 2.5.2 | 制定人员配备管理计 | manual | 2d | 2018-10-22 | 2018-10-23 | 26 | as late as possible | 质量专家 | 16h | 560 |
| 31 | 2.6 | **规划沟通** |  | 2d | 2018-10-25 | 2018-10-26 |  | as late as possible |  | 16h | 800 |
| 32 | 2.6.1 | 制定沟通管理计划 | manual | 2d | 2018-10-25 | 2018-10-26 | 30 | as late as possible | 项目经理 | 16h | 800 |
| 33 | 2.7 | **规划风险** |  | 6d | 2018-10-28 | 2018-11-02 |  | as late as possible |  | 48h | 2,400 |
| 34 | 2.7.1 | 识别风险 | manual | 2d | 2018-10-28 | 2018-10-29 | 15, 21, 25, 28 | as late as possible | 项目经理 | 16h | 800 |
| 35 | 2.7.2 | 风险分析 | manual | 2d | 2018-10-30 | 2018-10-31 | 34 | as late as possible | 项目经理 | 16h | 800 |
| 36 | 2.7.3 | 制定风险登记册 | manual | 2d | 2018-11-01 | 2018-11-02 | 35 | as late as possible | 项目经理 | 16h | 800 |
| 37 | 2.8 | 规划整合 | manual | 4d | 2018-11-04 | 2018-11-07 | 36 | as late as possible | 项目经理 | 32h | 1,600 |
| 38 | 3 | **执行与监督** |  | 28d | 2018-11-20 | 2018-12-27 |  | as late as possible |  | 384h | 13,200 |
| 39 | 3.1 | 组建项目团队 | manual | 1d | 2018-11-20 | 2018-11-20 | 7 | as late as possible | 项目经理; 测试员 | 16h | 640 |
| 40 | 3.2 | **项目执行** |  | 19d | 2018-11-21 | 2018-12-17 |  | as late as possible |  | 248h | 7,440 |
| 41 | 3.2.1 | **用户模块** |  | 19d | 2018-11-21 | 2018-12-17 |  | as late as possible |  | 120h | 3,600 |
| 42 | 3.2.1.1 | 首页 | manual | 2d | 2018-11-22 | 2018-11-23 | 43 | as late as possible | 程序员1 | 16h | 480 |
| 43 | 3.2.1.2 | 注册登陆 | manual | 1d | 2018-11-21 | 2018-11-21 | 39 | as late as possible | 程序员1 | 8h | 240 |
| 44 | 3.2.1.3 | 浏览课程 | manual | 2d | 2018-11-23 | 2018-11-24 | 48 | as late as possible | 程序员2 | 16h | 480 |
| 45 | 3.2.1.4 | 购买课程 | manual | 1d | 2018-11-27 | 2018-11-27 | 47 | as late as possible | 程序员1 | 8h | 240 |
| 46 | 3.2.1.5 | 收藏课程 | manual | 1d | 2018-11-28 | 2018-11-28 | 47 | as late as possible | 程序员1 | 8h | 240 |
| 47 | 3.2.1.6 | 学习课程 | manual | 2d | 2018-11-23 | 2018-11-26 | 44 | as late as possible | 程序员3 | 16h | 480 |
| 48 | 3.2.1.7 | 信息完善 | manual | 1d | 2018-11-22 | 2018-11-22 | 43 | as late as possible | 程序员3 | 8h | 240 |
| 49 | 3.2.1.8 | 关注老师 | manual | 1d | 2018-11-29 | 2018-11-29 | 47 | as late as possible | 程序员2 | 8h | 240 |
| 50 | 3.2.1.9 | 需求热搜 | manual | 2d | 2018-12-14 | 2018-12-17 | 61 | as late as possible | 程序员2 | 16h | 480 |
| 51 | 3.2.1.10 | 评论 | manual | 2d | 2018-11-30 | 2018-12-02 | 47 | as late as possible | 程序员2 | 16h | 480 |

| ID | WBS | Task | Type | Duration | Start | Finish | Predecessors | Constraint | Resources | Work | Cost |
| --- | --- | --- | --- | --- | --- | --- | --- | --- | --- | --- | --- |
| 52 | 3.2.2 | **商家模块** |  | 17d | 2018-11-21 | 2018-12-13 |  | as late as possible |  | 72h | 2,160 |
| 53 | 3.2.2.1 | 注册登录 | manual | 1d | 2018-11-21 | 2018-11-21 | 39 | as late as possible | 程序员2 | 8h | 240 |
| 54 | 3.2.2.2 | 课程上传 | manual | 3d | 2018-11-29 | 2018-12-02 | 60 | as late as possible | 程序员3 | 24h | 720 |
| 55 | 3.2.2.3 | 信息完善 | manual | 1d | 2018-11-22 | 2018-11-22 | 53 | as late as possible | 程序员4 | 8h | 240 |
| 56 | 3.2.2.4 | 申请场地 | manual | 2d | 2018-12-03 | 2018-12-04 | 54 | as late as possible | 程序员3 | 16h | 480 |
| 57 | 3.2.2.5 | 评论 | manual | 2d | 2018-11-30 | 2018-12-02 | 47 | as late as possible | 程序员4 | 16h | 480 |
| 58 | 3.2.3 | **管理员模块** |  | 16d | 2018-11-22 | 2018-12-13 |  | as late as possible |  | 56h | 1,680 |
| 59 | 3.2.3.1 | 注册登录 | manual | 1d | 2018-11-22 | 2018-11-22 | 39 | as late as possible | 程序员2 | 8h | 240 |
| 60 | 3.2.3.2 | 资格审查 | manual | 3d | 2018-11-26 | 2018-11-28 | 59 | as late as possible | 程序员4 | 24h | 720 |
| 61 | 3.2.3.3 | 系统信息 | manual | 3d | 2018-12-11 | 2018-12-13 | 54, 60 | as late as possible | 程序员4 | 24h | 720 |
| 62 | 3.3 | **项目监控** |  | 4d | 2018-12-18 | 2018-12-21 |  | as late as possible |  | 64h | 2,560 |
| 63 | 3.3.1 | 各项指标监控 | manual | 1d | 2018-12-18 | 2018-12-18 | 39 | as late as possible | 测试员; 项目经理 | 16h | 640 |
| 64 | 3.3.2 | 监控评审 | manual | 1d | 2018-12-19 | 2018-12-19 | 63 | as late as possible | 设计专家; 项目经理 | 16h | 680 |
| 65 | 3.3.3 | 变更评审 | manual | 1d | 2018-12-20 | 2018-12-20 | 64 | as late as possible | 设计专家; 项目经理 | 16h | 680 |
| 66 | 3.3.4 | 例会 | manual | 1d | 2018-12-21 | 2018-12-21 | 39 | as late as possible | UI专家; 测试员 | 16h | 560 |
| 67 | 3.4 | **管理干系人** |  | 3d | 2018-12-22 | 2018-12-25 |  | as late as possible |  | 32h | 1,600 |
| 68 | 3.4.1 | 发布项目信息 | manual | 1d | 2018-12-22 | 2018-12-22 | 39 | as late as possible | 项目经理 | 8h | 400 |
| 69 | 3.4.2 | 报告监控指标 | manual | 1d | 2018-12-23 | 2018-12-23 | 39 | as late as possible | 项目经理 | 8h | 400 |
| 70 | 3.4.3 | 干系人沟通 | manual | 2d | 2018-12-24 | 2018-12-25 | 39 | as late as possible | 项目经理 | 16h | 800 |
| 71 | 3.5 | **团队建设** |  | 2d | 2018-11-26 | 2018-11-27 |  | as late as possible |  | 16h | 560 |
| 72 | 3.5.1 | 沟通 | manual | 1d | 2018-11-26 | 2018-11-26 | 39 | as late as possible | UI专家; 测试员 | 16h | 560 |
| 73 | 3.6 | 项目验收 | manual | 1d | 2018-11-27 | 2018-11-27 | 40 | as late as possible | 项目经理 | 8h | 400 |
| 74 | 4 | **收尾** |  | 4d | 2019-01-01 | 2019-01-04 |  | as late as possible |  | 96h | 3,360 |
| 75 | 4.1 | 项目终验 | manual | 2d | 2019-01-01 | 2019-01-02 | 73 | as late as possible | UI专家; 设计专家; 测试员 | 48h | 1,680 |
| 76 | 4.2 | 项目内部收尾 | manual | 2d | 2019-01-03 | 2019-01-04 | 73 | as late as possible | UI专家; 测试员; 设计专家 | 48h | 1,680 |
